# 旅游平台WBS

Schedule from MS Project, 2019-03-22 to 2019-03-22.

## Calendars

- 标准: Mon-Fri 08:00-12:00, 13:00-17:00; Sat-Sun off.

## Schedule

| ID | WBS | Task | Type | Duration | Start | Finish |
| --- | --- | --- | --- | --- | --- | --- |
| 1 | 1 | **启动** |  | 1d? | 2019-03-22 | 2019-03-22 |
| 2 | 1.1 | 任命项目经理 | manual | 1d? | 2019-03-22 | 2019-03-22 |
| 3 | 1.2 | 组建核心团队 | manual | 1d? | 2019-03-22 | 2019-03-22 |
| 4 | 1.3 | 制定时间计划及里程碑 | manual | 1d? | 2019-03-22 | 2019-03-22 |
| 5 | 1.4 | 分析干系人 | manual | 1d? | 2019-03-22 | 2019-03-22 |
| 6 | 1.5 | 制定项目章程 | manual | 1d? | 2019-03-22 | 2019-03-22 |
| 7 | 1.6 | 项目启动大会 | manual | 1d? | 2019-03-22 | 2019-03-22 |
| 8 | 2 | **规划** |  | 1d? | 2019-03-22 | 2019-03-22 |
| 9 | 2.1 | **规划范围** |  | 1d? | 2019-03-22 | 2019-03-22 |
| 10 | 2.1.1 | 制定需求说明书 | manual | 1d? | 2019-03-22 | 2019-03-22 |
| 11 | 2.1.2 | 界面设计 | manual | 1d? | 2019-03-22 | 2019-03-22 |
| 12 | 2.1.3 | 详细设计说明书 | manual | 1d? | 2019-03-22 | 2019-03-22 |
| 13 | 2.1.4 | 范围说明书 | manual | 1d? | 2019-03-22 | 2019-03-22 |
| 14 | 2.1.5 | 创建WBS | manual | 1d? | 2019-03-22 | 2019-03-22 |
| 15 | 2.1.6 | 形成范围基准 | manual | 1d? | 2019-03-22 | 2019-03-22 |
| 16 | 2.2 | **规划时间** |  | 1d? | 2019-03-22 | 2019-03-22 |
| 17 | 2.2.1 | 排列工作包顺序 | manual | 1d? | 2019-03-22 | 2019-03-22 |
| 18 | 2.2.2 | 估算资源 | manual | 1d? | 2019-03-22 | 2019-03-22 |
| 19 | 2.2.3 | 估算持续时间 | manual | 1d? | 2019-03-22 | 2019-03-22 |
| 20 | 2.2.4 | 制定进度计划 | manual | 1d? | 2019-03-22 | 2019-03-22 |
| 21 | 2.3 | **规划成本** |  | 1d? | 2019-03-22 | 2019-03-22 |
| 22 | 2.3.1 | 项目成本估算 | manual | 1d? | 2019-03-22 | 2019-03-22 |
| 23 | 2.3.2 | 项目预算 | manual | 1d? | 2019-03-22 | 2019-03-22 |
| 24 | 2.4 | **规划质量** |  | 1d? | 2019-03-22 | 2019-03-22 |
| 25 | 2.4.1 | 制定测试计划 | manual | 1d? | 2019-03-22 | 2019-03-22 |
| 26 | 2.4.2 | 制定测试用例 | manual | 1d? | 2019-03-22 | 2019-03-22 |

| ID | WBS | Task | Type | Duration | Start | Finish |
| --- | --- | --- | --- | --- | --- | --- |
| 27 | 2.5 | **规划人力资源** |  | 1d? | 2019-03-22 | 2019-03-22 |
| 28 | 2.5.1 | 制定人力资源计划 | manual | 1d? | 2019-03-22 | 2019-03-22 |
| 29 | 2.5.2 | 制定人员配备管理计划 | manual | 1d? | 2019-03-22 | 2019-03-22 |
| 30 | 2.6 | **规划沟通** |  | 1d? | 2019-03-22 | 2019-03-22 |
| 31 | 2.6.1 | 制定沟通管理计划 | manual | 1d? | 2019-03-22 | 2019-03-22 |
| 32 | 2.7 | **规划采购** |  | 1d? | 2019-03-22 | 2019-03-22 |
| 33 | 2.7.1 | 自制外购分析 | manual | 1d? | 2019-03-22 | 2019-03-22 |
| 34 | 2.7.2 | 制定采购计划 | manual | 1d? | 2019-03-22 | 2019-03-22 |
| 35 | 2.8 | **规划风险** |  | 1d? | 2019-03-22 | 2019-03-22 |
| 36 | 2.8.1 | 识别风险 | manual | 1d? | 2019-03-22 | 2019-03-22 |
| 37 | 2.8.2 | 风险分析 | manual | 1d? | 2019-03-22 | 2019-03-22 |
| 38 | 2.8.3 | 制定风险登记册 | manual | 1d? | 2019-03-22 | 2019-03-22 |
| 39 | 2.9 | 规划整合 | manual | 1d? | 2019-03-22 | 2019-03-22 |
| 40 | 3 | **执行与监控** |  | 1d? | 2019-03-22 | 2019-03-22 |
| 41 | 3.1 | 组建项目团队 | manual | 1d? | 2019-03-22 | 2019-03-22 |
| 42 | 3.2 | **项目执行** |  | 1d? | 2019-03-22 | 2019-03-22 |
| 43 | 3.2.1 | **游客模块** |  | 1d? | 2019-03-22 | 2019-03-22 |
| 44 | 3.2.1.1 | 登录注册 | manual | 1d? | 2019-03-22 | 2019-03-22 |
| 45 | 3.2.1.2 | 发布期望导游信息 | manual | 1d? | 2019-03-22 | 2019-03-22 |
| 46 | 3.2.1.3 | 搜索导游信息 | manual | 1d? | 2019-03-22 | 2019-03-22 |
| 47 | 3.2.1.4 | 评价反馈 | manual | 1d? | 2019-03-22 | 2019-03-22 |
| 48 | 3.2.1.5 | 个人信息页面 | manual | 1d? | 2019-03-22 | 2019-03-22 |
| 49 | 3.2.1.6 | 支付定金 | manual | 1d? | 2019-03-22 | 2019-03-22 |
| 50 | 3.2.2 | **导游模块** |  | 1d? | 2019-03-22 | 2019-03-22 |
| 51 | 3.2.2.1 | 导游认证 | manual | 1d? | 2019-03-22 | 2019-03-22 |
| 52 | 3.2.2.2 | 发布旅游解说信息 | manual | 1d? | 2019-03-22 | 2019-03-22 |
| 53 | 3.2.2.3 | 导游信息页面 | manual | 1d? | 2019-03-22 | 2019-03-22 |
| 54 | 3.2.2.4 | 领取工资 | manual | 1d? | 2019-03-22 | 2019-03-22 |

| ID | WBS | Task | Type | Duration | Start | Finish |
| --- | --- | --- | --- | --- | --- | --- |
| 55 | 3.2.3 | **管理员模块** |  | 1d? | 2019-03-22 | 2019-03-22 |
| 56 | 3.2.3.1 | 导游审核 | manual | 1d? | 2019-03-22 | 2019-03-22 |
| 57 | 3.2.3.2 | 流量统计 | manual | 1d? | 2019-03-22 | 2019-03-22 |
| 58 | 3.2.3.3 | 数据备份 | manual | 1d? | 2019-03-22 | 2019-03-22 |
| 59 | 3.3 | **项目监控** |  | 1d? | 2019-03-22 | 2019-03-22 |
| 60 | 3.3.1 | 各项指标监控 | manual | 1d? | 2019-03-22 | 2019-03-22 |
| 61 | 3.3.2 | 监控 | manual | 1d? | 2019-03-22 | 2019-03-22 |
| 62 | 3.3.3 | 变更监控 | manual | 1d? | 2019-03-22 | 2019-03-22 |
| 63 | 3.3.4 | 例会 | manual | 1d? | 2019-03-22 | 2019-03-22 |
| 64 | 3.4 | **管理干系人** |  | 1d? | 2019-03-22 | 2019-03-22 |
| 65 | 3.4.1 | 发布项目信息 | manual | 1d? | 2019-03-22 | 2019-03-22 |
| 66 | 3.4.2 | 报告项目信息 | manual | 1d? | 2019-03-22 | 2019-03-22 |
| 67 | 3.4.3 | 报告监控指标 | manual | 1d? | 2019-03-22 | 2019-03-22 |
| 68 | 3.4.4 | 干系人沟通 | manual | 1d? | 2019-03-22 | 2019-03-22 |
| 69 | 3.5 | **团队建设** |  | 1d? | 2019-03-22 | 2019-03-22 |
| 70 | 3.5.1 | 培训 | manual | 1d? | 2019-03-22 | 2019-03-22 |
| 71 | 3.5.2 | 娱乐活动 | manual | 1d? | 2019-03-22 | 2019-03-22 |
| 72 | 3.5.3 | 沟通 | manual | 1d? | 2019-03-22 | 2019-03-22 |
| 73 | 3.6 | 采购 | manual | 1d? | 2019-03-22 | 2019-03-22 |
| 74 | 3.7 | 项目验收 | manual | 1d? | 2019-03-22 | 2019-03-22 |
| 75 | 4 | **收尾** |  | 1d? | 2019-03-22 | 2019-03-22 |
| 76 | 4.1 | 项目终验 | manual | 1d? | 2019-03-22 | 2019-03-22 |
| 77 | 4.2 | 结束采购 | manual | 1d? | 2019-03-22 | 2019-03-22 |
| 78 | 4.3 | 项目内部收尾 | manual | 1d? | 2019-03-22 | 2019-03-22 |
